# Bouwplanning v1.0

Schedule from an IFC model.
Parkeergarage Stationsplein Utrecht

## Schedule

| ID | Activity | Predecessors |
| --- | --- | --- |
| 1 | **1. Voorbereiding** |  |
| 1.1 | Kabels en leidingen verleggen |  |
| 1.2 | Bouwplaats inrichten | 1.1 |
| 1.3 | Monitoring omgeving | 1.2 |
| 1.4 | Verkeersmaatregelen | 1.3 |
| 1.5 | Start bouw | 1.4 |
| 2 | **2. Bouwkuip** |  |
| 2.1 | Diepwanden uitvoeren | 1.5 |
| 2.2 | Stempels niveau 1 | 2.1 |
| 2.3 | Ontgraven laag 1 | 2.2 |
| 2.4 | Stempels niveau 2 | 2.3 |
| 2.5 | Ontgraven laag 2 | 2.4 |
| 2.6 | Stempels niveau 3 | 2.5 |
| 2.7 | Ontgraven laag 3 | 2.6 |
| 2.8 | Onderwaterbeton vloer | 2.7 |
| 2.9 | Droogpompen | 2.8 |
| 2.10 | Bouwkuip droog | 2.9 |
| 3 | **3. Betonconstructie** |  |
| 3.1 | Vloer niveau -3 | 2.10 |
| 3.2 | Kolommen en wanden -3 | 3.1 |
| 3.3 | Vloer niveau -2 | 3.2 |
| 3.4 | Kolommen en wanden -2 | 3.3 |
| 3.5 | Vloer niveau -1 | 3.4 |
| 3.6 | Kolommen en wanden -1 | 3.5 |
| 3.7 | Dek parkeergarage | 3.6 |
| 3.8 | Stempels verwijderen | 3.7 |
| 3.9 | Waterdichting | 3.8 |

| ID | Activity | Predecessors |
| --- | --- | --- |
| 4 | **4. Installaties** |  |
| 4.1 | Elektra hoofdverdeling | 3.9 |
| 4.2 | Verlichting parkeerlagen | 4.1 |
| 4.3 | Ventilatie en CO-detectie | 4.2 |
| 4.4 | Sprinklerinstallatie | 4.3 |
| 4.5 | Parkeergeleiding systeem | 4.4 |
| 4.6 | Liftinstallatie | 4.5 |
| 4.7 | Brandmeldinstallatie | 4.6 |
| 5 | **5. Afwerking** |  |
| 5.1 | Vloercoating aanbrengen | 4.7 |
| 5.2 | Belijning en bewegwijzering | 5.1 |
| 5.3 | Toegangscontrole slagbomen | 5.2 |
| 5.4 | Nooduitgangen afwerken | 5.3 |
| 6 | **6. Bovengronds herstel** |  |
| 6.1 | Plein opnieuw inrichten | 5.4 |
| 6.2 | Bestrating en groen | 6.1 |
| 6.3 | Verkeersmaatregelen opheffen | 6.2 |
| 6.4 | Oplevering | 6.3 |
