# Bouwplanning v1.0

Schedule from an IFC model.
Dijk Versterking Markermeerdijk

## Schedule

| ID | Activity | Predecessors |
| --- | --- | --- |
| 1 | **1. Voorbereiding** |  |
| 1.1 | Ecologisch onderzoek |  |
| 1.2 | Vergunningen waterbeheer | 1.1 |
| 1.3 | Grondaankoop afronden | 1.2 |
| 1.4 | Bouwwegen aanleggen | 1.3 |
| 1.5 | Depots inrichten | 1.4 |
| 1.6 | Start werkzaamheden | 1.5 |
| 2 | **2. Voorbelasting** |  |
| 2.1 | Grond aanvoeren depot | 1.6 |
| 2.2 | Voorbelasting km 0-1 | 2.1 |
| 2.3 | Voorbelasting km 1-2 | 2.2 SS |
| 2.4 | Voorbelasting km 2-3 | 2.3 |
| 2.5 | Zettingsperiode afwachten | 2.4 |
| 2.6 | Monitoring zettingen | 2.5 SS |
| 3 | **3. Grondlichaam** |  |
| 3.1 | Voorbelasting verwijderen | 2.6 |
| 3.2 | Geotextiel aanbrengen | 3.1 |
| 3.3 | Kleilaag kern opbouwen km 0-2 | 3.2 |
| 3.4 | Kleilaag kern opbouwen km 2-5 | 3.3 |
| 3.5 | Zandkern aanbrengen | 3.4 |
| 3.6 | Profielcontrole inmeten | 3.5 |
| 4 | **4. Bekleding & Erosiebescherming** |  |
| 4.1 | Steenzetting binnentalud | 3.6 |
| 4.2 | Grasmat buitentalud | 4.1 |
| 4.3 | Teenconstructie waterzijde | 4.2 |
| 4.4 | Kreukelberm storten | 4.3 |

| ID | Activity | Predecessors |
| --- | --- | --- |
| 5 | **5. Kunstwerken** |  |
| 5.1 | Duiker renovatie | 4.4 |
| 5.2 | Gemaal aanpassen | 5.1 |
| 5.3 | Keersluis onderhoud | 5.2 |
| 5.4 | Trappen en overgangen | 5.3 |
| 6 | **6. Afwerking & Herstel** |  |
| 6.1 | Dijkweg herstellen | 5.4 |
| 6.2 | Fietspad aanleggen | 6.1 |
| 6.3 | Ecologisch herstel | 6.2 |
| 6.4 | Hekwerk en bebording | 6.3 |
| 6.5 | Oplevering | 6.4 |
