# Bouwplanning v1.0

Schedule from an IFC model.
Hotel 120 Kamers Scheveningen

## Schedule

| ID | Activity | Predecessors |
| --- | --- | --- |
| 1 | **1. Voorbereiding** |  |
| 1.1 | Sloop bestaand pand |  |
| 1.2 | Bouwplaats inrichten | 1.1 |
| 1.3 | Funderingsonderzoek | 1.2 |
| 1.4 | Start nieuwbouw | 1.3 |
| 2 | **2. Fundering** |  |
| 2.1 | Damwanden boulevard | 1.4 |
| 2.2 | Ontgraven kelder | 2.1 |
| 2.3 | Funderingspalen | 2.2 |
| 2.4 | Keldervloer wellness | 2.3 |
| 2.5 | Kelderwanden | 2.4 |
| 3 | **3. Ruwbouw** |  |
| 3.1 | Begane grond lobby | 2.5 |
| 3.2 | Verdieping 1 kamers | 3.1 |
| 3.3 | Verdieping 2 kamers | 3.2 |
| 3.4 | Verdieping 3 kamers | 3.3 |
| 3.5 | Verdieping 4 kamers | 3.4 |
| 3.6 | Verdieping 5 kamers | 3.5 |
| 3.7 | Penthouse verdieping | 3.6 |
| 3.8 | Dakterras constructie | 3.7 |
| 3.9 | Hoogste punt | 3.8 |
| 4 | **4. Gevel** |  |
| 4.1 | Vliesgevel zeezijde | 3.9 |
| 4.2 | Vliesgevel landzijde | 4.1 |
| 4.3 | Gevelbekleding natuursteen | 4.2 |
| 4.4 | Kozijnen en beglazing | 4.3 |
| 4.5 | Wind- en waterdicht | 4.4 |

| ID | Activity | Predecessors |
| --- | --- | --- |
| 5 | **5. Installaties** |  |
| 5.1 | Elektra hoofdverdeling | 4.5 |
| 5.2 | Stijgleidingen alle media | 5.1 |
| 5.3 | VRF klimaatsysteem | 5.2 SS |
| 5.4 | Ventilatie en luchtbehandeling | 5.3 |
| 5.5 | Liftinstallatie 2x | 5.4 |
| 5.6 | Sprinkler en BMI | 5.5 |
| 5.7 | Wellness installaties | 5.6 |
| 5.8 | Hotelautomatisering | 5.7 |
| 6 | **6. Afbouw** |  |
| 6.1 | Kamerwanden prefab | 5.8 |
| 6.2 | Badkamer prefab units | 6.1 |
| 6.3 | Dekvloeren en tapijt | 6.2 |
| 6.4 | Lobby afwerking luxe | 6.3 |
| 6.5 | Restaurant keuken | 6.4 |
| 6.6 | Schilderwerk | 6.5 |
| 6.7 | Inrichting kamers | 6.6 |
| 7 | **7. Oplevering** |  |
| 7.1 | Dakterras afwerken | 6.7 |
| 7.2 | Buitenterrein boulevard | 7.1 |
| 7.3 | Testen en inregelen | 7.2 |
| 7.4 | Oplevering hotel | 7.3 |
