# Bouwplanning v1.0

Schedule from an IFC model.
Basisschool Nieuwbouw IKC

## Schedule

| ID | Activity | Predecessors |
| --- | --- | --- |
| 1 | **1. Voorbereiding** |  |
| 1.1 | Bouwterrein klaarmaken |  |
| 1.2 | Bouwplaats inrichten | 1.1 |
| 1.3 | Start bouw | 1.2 |
| 2 | **2. Fundering** |  |
| 2.1 | Heien funderingspalen | 1.3 |
| 2.2 | Funderingsbalken en poeren | 2.1 |
| 2.3 | Riolering onder vloer | 2.2 |
| 2.4 | Begane grondvloer storten | 2.3 |
| 3 | **3. Ruwbouw** |  |
| 3.1 | Begane grond metselwerk | 2.4 |
| 3.2 | Verdiepingsvloer prefab | 3.1 |
| 3.3 | Verdieping metselwerk | 3.2 |
| 3.4 | CLT dakconstructie | 3.3 |
| 3.5 | Dakbedekking EPDM | 3.4 |
| 3.6 | Sedum dak aanleggen | 3.5 |
| 3.7 | Hoogste punt | 3.6 |
| 4 | **4. Gevel & Dak** |  |
| 4.1 | Gevelisolatie ETICS | 3.7 |
| 4.2 | Kozijnen aluminium | 4.1 |
| 4.3 | Gevelafwerking baksteen strips | 4.2 |
| 4.4 | Zonnepanelen dak | 4.3 |
| 4.5 | Wind- en waterdicht | 4.4 |
| 5 | **5. Installaties** |  |
| 5.1 | Elektra en data | 4.5 |
| 5.2 | Warmtepomp lucht-water | 5.1 |
| 5.3 | Vloerverwarming | 5.2 SS |
| 5.4 | Ventilatie CO2-gestuurd | 5.3 |
| 5.5 | Sanitair leidingwerk | 5.4 |
| 5.6 | Brandmeld en ontruiming | 5.5 |

| ID | Activity | Predecessors |
| --- | --- | --- |
| 6 | **6. Afbouw** |  |
| 6.1 | Binnenwanden metal stud | 5.6 |
| 6.2 | Plafonds akoestisch | 6.1 |
| 6.3 | Dekvloeren | 6.2 |
| 6.4 | Tegelwerk sanitair | 6.3 |
| 6.5 | Schilderwerk | 6.4 |
| 6.6 | Vloerafwerking linoleum | 6.5 |
| 6.7 | Buitenspeelplaats | 6.6 |
| 7 | **7. Oplevering** |  |
| 7.1 | Inrichting lokalen | 6.7 |
| 7.2 | Testen en inregelen | 7.1 |
| 7.3 | Oplevering IKC | 7.2 |
