# Bouwplanning v1.0

Schedule from an IFC model.
Woonwijk 60 Woningen Almere

## Schedule

| ID | Activity | Predecessors |
| --- | --- | --- |
| 1 | **1. Bouwrijp maken** |  |
| 1.1 | Terrein ontruimen en egaliseren |  |
| 1.2 | Hoofdriolering aanleggen | 1.1 |
| 1.3 | Nutsvoorzieningen hoofdleiding | 1.2 |
| 1.4 | Bouwwegen aanleggen | 1.3 |
| 1.5 | Start bouw | 1.4 |
| 2 | **2. Fundering Fase 1 (blok 1-3)** |  |
| 2.1 | Heien blok 1 (10 rijwoningen) | 1.5 |
| 2.2 | Heien blok 2 (10 rijwoningen) | 2.1 |
| 2.3 | Heien blok 3 (10 rijwoningen) | 2.2 SS |
| 2.4 | Funderingsbalken blok 1-3 | 2.3 |
| 2.5 | Begane grondvloer blok 1-3 | 2.4 |
| 3 | **3. Fundering Fase 2 (blok 4-5)** |  |
| 3.1 | Heien blok 4 (10 rijwoningen) | 2.5 |
| 3.2 | Heien blok 5 (10 2-1-kap) | 3.1 SS |
| 3.3 | Funderingsbalken blok 4-5 | 3.2 |
| 3.4 | Begane grondvloer blok 4-5 | 3.3 |
| 4 | **4. Ruwbouw Fase 1** |  |
| 4.1 | Metselwerk BG blok 1-3 | 3.4 |
| 4.2 | Verdiepingsvloer blok 1-3 | 4.1 |
| 4.3 | Metselwerk verdieping blok 1-3 | 4.2 |
| 4.4 | Kapconstructie blok 1-3 | 4.3 |
| 4.5 | Dakpannen blok 1-3 | 4.4 |
| 4.6 | Hoogste punt fase 1 | 4.5 |

| ID | Activity | Predecessors |
| --- | --- | --- |
| 5 | **5. Ruwbouw Fase 2** |  |
| 5.1 | Metselwerk BG blok 4-5 | 4.6 |
| 5.2 | Verdiepingsvloer blok 4-5 | 5.1 |
| 5.3 | Metselwerk verdieping blok 4-5 | 5.2 |
| 5.4 | Kapconstructie blok 4-5 | 5.3 |
| 5.5 | Dakpannen blok 4-5 | 5.4 |
| 5.6 | Hoogste punt fase 2 | 5.5 |
| 6 | **6. Gevels & Daken** |  |
| 6.1 | Kozijnen blok 1-3 | 5.6 |
| 6.2 | Kozijnen blok 4-5 | 6.1 |
| 6.3 | Geveldichting en isolatie | 6.2 |
| 6.4 | Dakgoten en HWA | 6.3 |
| 6.5 | Wind- en waterdicht alle blokken | 6.4 |
| 7 | **7. Installaties** |  |
| 7.1 | Elektra blok 1-3 | 6.5 |
| 7.2 | Elektra blok 4-5 | 7.1 SS |
| 7.3 | Loodgieter blok 1-3 | 7.2 |
| 7.4 | Loodgieter blok 4-5 | 7.3 |
| 7.5 | Warmtepompen alle woningen | 7.4 |
| 7.6 | Ventilatie WTW units | 7.5 |
| 8 | **8. Afbouw Fase 1** |  |
| 8.1 | Stucwerk blok 1-3 | 7.6 |
| 8.2 | Tegelwerk blok 1-3 | 8.1 |
| 8.3 | Keukens blok 1-3 | 8.2 |
| 8.4 | Schilderwerk blok 1-3 | 8.3 |
| 8.5 | Vloerafwerking blok 1-3 | 8.4 |

| ID | Activity | Predecessors |
| --- | --- | --- |
| 9 | **9. Afbouw Fase 2** |  |
| 9.1 | Stucwerk blok 4-5 | 8.5 |
| 9.2 | Tegelwerk blok 4-5 | 9.1 |
| 9.3 | Keukens blok 4-5 | 9.2 |
| 9.4 | Schilderwerk blok 4-5 | 9.3 |
| 9.5 | Vloerafwerking blok 4-5 | 9.4 |
| 10 | **10. Woonrijp maken** |  |
| 10.1 | Definitieve riolering aansluiten | 9.5 |
| 10.2 | Straatwerk en trottoirs | 10.1 |
| 10.3 | Parkeerplaatsen aanleggen | 10.2 |
| 10.4 | Groenvoorziening en bomen | 10.3 |
| 10.5 | Speelvoorzieningen | 10.4 |
| 10.6 | Straatverlichting | 10.5 |
| 11 | **11. Oplevering** |  |
| 11.1 | Vooroplevering fase 1 | 10.6 |
| 11.2 | Vooroplevering fase 2 | 11.1 |
| 11.3 | Oplevering woningen | 11.2 |
| 11.4 | Woonwijk gereed | 11.3 |
